# pool-constuction-schedule

Schedule from MS Project, 2027-01-04 to 2027-04-13, status date 2027-02-12, costs in ₦.

## Calendars

- Chief's Pool: Mon-Sat 08:00-12:00, 13:00-17:00; Sun off. Exceptions (off unless hours are given): 2027-01-09 to 2027-05-03 08:00-12:00, 13:00-17:00 (Saturday workday, recurring), 2027-03-10 (Eid Fitr Holiday), 2027-03-11 (Eid Fitr Holday), 2027-03-29 (Easter).

## Resources

| Resource | Group | Unit | Rate |
| --- | --- | --- | --- |
| Project Engr | employee |  | 6250 |
| Site Engr | employee |  | 3750 |
| Surveyor | contract |  | 3750 |
| Geotechnical Engr | contract |  | 6875 |
| Structural Engr | employee |  | 3750 |
| Excavator /Operator | employee |  | 8750 |
| Iron benders | contract |  | 1875 |
| Carpenters | contract |  | 2500 |
| Labourers | contract |  | 1250 |
| Plumber | contract |  | 4375 |
| Electrician | contract |  | 4375 |
| Tilers | contract |  | 2500 |
| Waterproofing Team | contract |  | 3125 |
| Cement(50kg bag) |  | bag | 13000 |
| Steel bars |  | tonne | 800000 |
| Aggregates(sand and granite) |  | tonne | 25000 |
| Pool tiles |  | m. | 15000 |
| Waterproofing membrane |  | m. | 9000 |
| Coping stones |  | m. | 20000 |
| Permits/Approvals |  |  |  |
| Pool equipment |  |  |  |
| Plumbing materials |  |  |  |
| Electrical materials |  |  |  |
| Fence / Gate |  |  |  |

## Schedule

| ID | WBS | Task | Type | Duration | Start | Finish | Predecessors | Baseline start | Baseline finish | Baseline duration | Total slack | Free slack | Resources | Work | Cost | Baseline cost |
| --- | --- | --- | --- | --- | --- | --- | --- | --- | --- | --- | --- | --- | --- | --- | --- | --- |
| 1 | 1 | **Pool Construction Project** |  | 83d | 2027-01-04 | 2027-04-13 |  | 2027-01-04 | 2027-04-10 | 81d | 0d |  | Project Engr [50%]; Site Engr | 2088h | 33,253,000 | 32,723,000 |
| 2 | 1.1 | **PHASE 1: INITIATION & DESIGN** |  | 29d | 2027-01-04 | 2027-02-05 |  | 2027-01-04 | 2027-02-03 | 27d | 0d |  |  | 124.8h | 1,575,000 | 1,495,000 |
| 3 | 1.1.1 | Site survey & topographic mapping |  | 1d | 2027-01-04 | 2027-01-04 |  | 2027-01-04 | 2027-01-04 | 1d | 0d |  | Surveyor | 8h | 30,000 | 30,000 |
| 4 | 1.1.2 | Geotechnical soil investigation |  | 3d | 2027-01-05 | 2027-01-07 | 3 | 2027-01-05 | 2027-01-07 | 3d | 0d |  | Geotechnical Engr | 24h | 165,000 | 165,000 |
| 5 | 1.1.3 | Pool design & structural drawings |  | 10d | 2027-01-08 | 2027-01-19 | 4, 3 | 2027-01-08 | 2027-01-19 | 10d | 0d |  | Structural Engr | 80h | 300,000 | 300,000 |
| 6 | 1.1.4 | Client design approval |  | 8d | 2027-01-20 | 2027-01-28 | 5 | 2027-01-20 | 2027-01-22 | 3d | 0d |  | Project Engr [20%] | 12.8h | 80,000 |  |
| 7 | 1.1.5 | Design approved (MILESTONE) | milestone | 0d | 2027-01-28 | 2027-01-28 | 6 | 2027-01-22 | 2027-01-22 | 0d | 0d |  |  |  |  |  |
| 8 | 1.1.6 | Obtain permits & approvals |  | 7d | 2027-01-29 | 2027-02-05 | 7 | 2027-01-23 | 2027-02-03 | 10d | 0d |  | Permits/Approvals [0.1%] |  | 1,000,000 | 1,000,000 |
| 9 | 1.1.7 | Permit Secured (MILESTONE) | milestone | 0d | 2027-02-05 | 2027-02-05 | 8 | 2027-02-03 | 2027-02-03 | 0d | 0d |  |  |  |  |  |
| 10 | 1.2 | **PHASE 2: PROCUREMENT** |  | 15d | 2027-01-29 | 2027-02-15 |  | 2027-01-23 | 2027-02-09 | 15d | 6d |  |  | 47.2h | 9,295,000 | 9,000,000 |
| 11 | 1.2.1 | Order & deliver rebar, cement, aggregates |  | 7d | 2027-01-29 | 2027-02-05 | 7 | 2027-01-23 | 2027-01-26 | 3d | 6d |  | Project Engr [20%] | 11.2h | 70,000 |  |
| 12 | 1.2.2 | Order pool equipment (pump, filter, lights) |  | 15d | 2027-01-29 | 2027-02-15 | 7 | 2027-01-23 | 2027-02-09 | 15d | 36d | 28d | Pool equipment [0.1%]; Project Engr [30%] | 36h | 9,225,000 | 9,000,000 |
| 13 | 1.2.3 | Order tiles, coping, waterproofing materials |  | 14d | 2027-01-29 | 2027-02-13 | 7 | 2027-01-23 | 2027-02-05 | 12d | 24d |  |  |  |  |  |
| 14 | 1.3 | **PHASE 3: SITE PREPARATION** |  | 4d | 2027-02-06 | 2027-02-10 |  | 2027-02-04 | 2027-02-08 | 4d | 0d |  |  | 48h | 140,000 | 140,000 |
| 15 | 1.3.1 | Site mobilisation & hoarding |  | 2d | 2027-02-06 | 2027-02-08 | 9 | 2027-02-04 | 2027-02-05 | 2d | 0d |  | Labourers | 16h | 20,000 | 20,000 |
| 16 | 1.3.2 | Site clearing |  | 1d | 2027-02-09 | 2027-02-09 | 15 | 2027-02-06 | 2027-02-06 | 1d | 0d |  | Labourers [200%]; Excavator /Operator | 16h | 80,000 | 80,000 |
| 17 | 1.3.3 | Setting out pool outline |  | 1d | 2027-02-10 | 2027-02-10 | 16 | 2027-02-08 | 2027-02-08 | 1d | 0d |  | Surveyor; Labourers | 16h | 40,000 | 40,000 |
| 18 | 1.4 | **PHASE 4: EXCAVATION** |  | 3d | 2027-02-11 | 2027-02-13 |  | 2027-02-09 | 2027-02-10 | 2d | 0d |  |  | 48h | 873,000 | 793,000 |
| 19 | 1.4.1 | Excavation & compact subgrade |  | 2d | 2027-02-11 | 2027-02-12 | 17 | 2027-02-09 | 2027-02-09 | 1d | 0d |  | Excavator /Operator; Labourers | 32h | 160,000 | 80,000 |
| 20 | 1.4.2 | Blinding concrete |  | 1d | 2027-02-13 | 2027-02-13 | 11, 19 | 2027-02-10 | 2027-02-10 | 1d | 0d |  | Labourers [200%]; Cement(50kg bag) [36 bag]; Aggregates(sand and granite) [9 tonne] | 16h | 713,000 | 713,000 |
| 21 | 1.5 | **PHASE 5: STRUCTURAL WORKS** |  | 24d | 2027-02-15 | 2027-03-16 |  | 2027-02-11 | 2027-03-12 | 24d | 0d |  |  | 320h | 7,360,000 | 7,360,000 |
| 22 | 1.5.1 | Install main drain |  | 2d | 2027-02-15 | 2027-02-16 | 20 | 2027-02-11 | 2027-02-12 | 2d | 0d |  | Plumber | 16h | 70,000 | 70,000 |
| 23 | 1.5.2 | Fix floor rebar |  | 3d | 2027-02-17 | 2027-02-19 | 22 | 2027-02-13 | 2027-02-16 | 3d | 0d |  | Iron benders [200%]; Steel bars [1.8 tonne] | 48h | 1,530,000 | 1,530,000 |
| 24 | 1.5.3 | Cast floor slab |  | 1d | 2027-02-20 | 2027-02-20 | 23 | 2027-02-17 | 2027-02-17 | 1d | 0d |  | Labourers [200%]; Cement(50kg bag) [115 bag]; Aggregates(sand and granite) [34 tonne] | 16h | 2,365,000 | 2,365,000 |
| 25 | 1.5.4 | Cure floor slab |  | 7d | 2027-02-22 | 2027-03-01 | 24 | 2027-02-18 | 2027-02-25 | 7d | 11d |  | Labourers | 56h | 70,000 | 70,000 |
| 26 | 1.5.5 | Fix wall rebar |  | 2d | 2027-02-24 | 2027-02-25 | 24FS+2d | 2027-02-20 | 2027-02-22 | 2d | 0d |  | Iron benders [200%]; Steel bars [1.5 tonne] | 32h | 1,260,000 | 1,260,000 |
| 27 | 1.5.6 | Wall formwork |  | 4d | 2027-02-26 | 2027-03-02 | 26 | 2027-02-23 | 2027-02-26 | 4d | 0d |  | Carpenters [200%] | 64h | 160,000 | 160,000 |
| 28 | 1.5.7 | Cast walls |  | 1d | 2027-03-03 | 2027-03-03 | 27 | 2027-02-27 | 2027-02-27 | 1d | 0d |  | Labourers [200%]; Cement(50kg bag) [100 bag]; Aggregates(sand and granite) [19 tonne] | 16h | 1,795,000 | 1,795,000 |
| 29 | 1.5.8 | Cure walls |  | 7d | 2027-03-04 | 2027-03-13 | 28 | 2027-03-01 | 2027-03-08 | 7d | 0d |  | Labourers | 56h | 70,000 | 70,000 |
| 30 | 1.5.9 | Strip formwork |  | 2d | 2027-03-15 | 2027-03-16 | 29 | 2027-03-09 | 2027-03-12 | 2d | 0d |  | Carpenters | 16h | 40,000 | 40,000 |
| 31 | 1.5.10 | Structure complete (MILESTONE) | milestone | 0d | 2027-03-16 | 2027-03-16 | 30, 25 | 2027-03-12 | 2027-03-12 | 0d | 0d |  |  |  |  |  |

| ID | WBS | Task | Type | Duration | Start | Finish | Predecessors | Baseline start | Baseline finish | Baseline duration | Total slack | Free slack | Resources | Work | Cost | Baseline cost |
| --- | --- | --- | --- | --- | --- | --- | --- | --- | --- | --- | --- | --- | --- | --- | --- | --- |
| 32 | 1.6 | **PHASE 6: WATERPROOFING & MEP** |  | 12d | 2027-03-15 | 2027-03-27 |  | 2027-03-09 | 2027-03-24 | 12d | 2d |  |  | 192h | 4,440,000 | 4,440,000 |
| 33 | 1.6.1 | Waterproofing |  | 2d | 2027-03-17 | 2027-03-18 | 31, 13 | 2027-03-13 | 2027-03-15 | 2d | 0d |  | Waterproofing Team; Waterproofing membrane [130 m.] | 16h | 1,220,000 | 1,220,000 |
| 34 | 1.6.2 | Hydrostatic leak test |  | 2d | 2027-03-19 | 2027-03-20 | 33 | 2027-03-16 | 2027-03-17 | 2d | 0d |  | Plumber | 16h | 70,000 | 70,000 |
| 35 | 1.6.3 | Plumbing pipework installation |  | 5d | 2027-03-17 | 2027-03-22 | 31 | 2027-03-13 | 2027-03-18 | 5d | 8d | 0d | Plumber; Plumbing materials [0.1%] | 40h | 1,675,000 | 1,675,000 |
| 36 | 1.6.4 | Build pump house / equipment room |  | 6d | 2027-03-15 | 2027-03-20 | 29 | 2027-03-09 | 2027-03-17 | 6d | 6d | 0d | Labourers | 48h | 60,000 | 60,000 |
| 37 | 1.6.5 | Install pump, filter, chlorinator |  | 3d | 2027-03-23 | 2027-03-25 | 36, 35, 12 | 2027-03-19 | 2027-03-22 | 3d | 8d |  | Plumber | 24h | 105,000 | 105,000 |
| 38 | 1.6.6 | Electrical conduits & wiring |  | 4d | 2027-03-22 | 2027-03-25 | 36 | 2027-03-18 | 2027-03-22 | 4d | 6d | 0d | Electrician; Electrical materials [0.1%] | 32h | 1,240,000 | 1,240,000 |
| 39 | 1.6.7 | Install underwater lighting |  | 2d | 2027-03-26 | 2027-03-27 | 38, 34 | 2027-03-23 | 2027-03-24 | 2d | 6d |  | Electrician | 16h | 70,000 | 70,000 |
| 40 | 1.7 | **PHASE 7: FINISHING** |  | 14d | 2027-03-22 | 2027-04-07 |  | 2027-03-18 | 2027-04-03 | 14d | 0d |  |  | 264h | 4,870,000 | 4,870,000 |
| 41 | 1.7.1 | Render & screed |  | 2d | 2027-03-22 | 2027-03-23 | 34 | 2027-03-18 | 2027-03-19 | 2d | 0d |  | Tilers [200%] | 32h | 80,000 | 80,000 |
| 42 | 1.7.2 | Tile installation |  | 5d | 2027-03-24 | 2027-03-30 | 41 | 2027-03-20 | 2027-03-25 | 5d | 0d |  | Tilers [200%]; Pool tiles [135 m.] | 80h | 2,225,000 | 2,225,000 |
| 43 | 1.7.3 | Grouting & sealing |  | 2d | 2027-03-31 | 2027-04-01 | 42 | 2027-03-26 | 2027-03-27 | 2d | 0d |  | Tilers | 16h | 40,000 | 40,000 |
| 44 | 1.7.4 | Coping stones |  | 3d | 2027-04-02 | 2027-04-05 | 43 | 2027-03-30 | 2027-04-01 | 3d | 0d |  | Tilers; Coping stones [36 m.] | 24h | 780,000 | 780,000 |
| 45 | 1.7.5 | Pool deck base concrete |  | 6d | 2027-03-22 | 2027-03-27 | 34 | 2027-03-18 | 2027-03-24 | 6d | 2d | 0d | Labourers; Cement(50kg bag) [60 bag]; Aggregates(sand and granite) [15 tonne] | 48h | 1,215,000 | 1,215,000 |
| 46 | 1.7.6 | Anti-slip surface finish |  | 5d | 2027-03-30 | 2027-04-03 | 45 | 2027-03-25 | 2027-03-31 | 5d | 2d | 0d | Labourers | 40h | 50,000 | 50,000 |
| 47 | 1.7.7 | Safety fence & gate |  | 3d | 2027-04-05 | 2027-04-07 | 46 | 2027-04-01 | 2027-04-03 | 3d | 2d |  | Carpenters; Fence / Gate [0.1%] | 24h | 480,000 | 480,000 |
| 48 | 1.8 | **PHASE 8: COMMISSIONING & HANDOVER** |  | 7d | 2027-04-06 | 2027-04-13 |  | 2027-04-02 | 2027-04-10 | 8d | 0d |  |  | 48h | 135,000 | 170,000 |
| 49 | 1.8.1 | Fill pool with water |  | 1d | 2027-04-06 | 2027-04-06 | 37, 39, 44 | 2027-04-02 | 2027-04-02 | 1d | 0d |  |  |  |  |  |
| 50 | 1.8.2 | Commissioning & chemical balancing |  | 3d | 2027-04-07 | 2027-04-09 | 49 | 2027-04-03 | 2027-04-06 | 3d | 0d |  | Plumber | 24h | 105,000 | 105,000 |
| 51 | 1.8.3 | Safety inspection | milestone | 0d | 2027-04-09 | 2027-04-09 | 47, 50 | 2027-04-07 | 2027-04-07 | 1d | 0d |  | Site Engr [50%] |  |  | 35,000 |
| 52 | 1.8.4 | Snagging / punch list |  | 3d | 2027-04-10 | 2027-04-13 | 51 | 2027-04-08 | 2027-04-10 | 3d | 0d |  | Labourers | 24h | 30,000 | 30,000 |
| 53 | 1.8.5 | Project handover (MILESTONE) | milestone | 0d | 2027-04-13 | 2027-04-13 | 52 | 2027-04-10 | 2027-04-10 | 0d | 0d |  |  |  |  |  |
